# Calendário UTP

Schedule from MS Project, 2023-07-17 to 2023-10-03, status date 2024-07-31, costs in R$.

## Calendars

- Calendário UTP: Mon-Fri 09:00-12:00, 13:00-18:00; Sat-Sun off. Exceptions (off unless hours are given): 2023-09-07 to 2032-09-07 (Independência, recurring), 2023-09-08 to 2032-09-08 (Dia de Curitiba, recurring).

## Resources

| Resource | Unit | Rate |
| --- | --- | --- |
| Gerente de Projeto |  | 100 |
| Analista de Requisitos |  | 50 |
| Analista de Sistemas |  | 30 |
| Café | Litro | 10 |

## Schedule

| ID | WBS | Task | Type | Duration | Start | Finish | Predecessors | Baseline start | Baseline finish | Baseline duration | Total slack | Resources | Work | Cost | Baseline cost |
| --- | --- | --- | --- | --- | --- | --- | --- | --- | --- | --- | --- | --- | --- | --- | --- |
| 1 | 1 | **Planejamento de Requisitos** |  | 55d? | 2023-07-17 | 2023-10-03 |  | 2023-07-17 | 2023-10-03 | 55d? | 0d |  | 684h | 33,550 | 33,550 |
| 2 | 1.1 | **Estabelecer processo** |  | 27d? | 2023-07-17 | 2023-08-22 |  | 2023-07-17 | 2023-08-22 | 27d? | 0d |  | 372h | 18,870 | 18,870 |
| 3 | 1.1.1 | Revisar sistemas existentes |  | 15d? | 2023-07-17 | 2023-08-04 |  | 2023-07-17 | 2023-08-04 | 15d? | 0d | Analista de Requisitos; Analista de Sistemas; Gerente de Projeto [50%]; Café [10 Litro] | 240h | 12,500 | 12,500 |
| 4 | 1.1.2 | Processo de modelagem |  | 3d? | 2023-08-07 | 2023-08-09 | 3 | 2023-08-07 | 2023-08-09 | 3d? | 0d | Analista de Sistemas | 24h | 720 | 720 |
| 5 | 1.1.3 | Desenvolver análise de fluxo de trabalho |  | 6d? | 2023-08-10 | 2023-08-17 | 4 | 2023-08-10 | 2023-08-17 | 6d? | 0d | Analista de Requisitos; Analista de Sistemas | 88h | 3,600 | 3,600 |
| 6 | 1.1.4 | Desenvolver cronograma das atividades |  | 2d? | 2023-08-15 | 2023-08-16 | 5FS-3d | 2023-08-15 | 2023-08-16 | 2d? | 32d | Gerente de Projeto [50%]; Café [2 Litro] | 8h | 820 | 820 |
| 7 | 1.1.5 | Calcular orçamento |  | 3d? | 2023-08-18 | 2023-08-22 | 4, 5 | 2023-08-18 | 2023-08-22 | 3d? | 0d | Gerente de Projeto [50%]; Café [3 Litro] | 12h | 1,230 | 1,230 |
| 8 | 1.1.6 | Entrega do processo | milestone | 0d | 2023-08-22 | 2023-08-22 | 7FF | 2023-08-22 | 2023-08-22 | 0d | 28d |  |  |  |  |
| 9 | 1.2 | **Identificar requisitos** |  | 27d? | 2023-08-24 | 2023-10-03 |  | 2023-08-24 | 2023-10-03 | 27d? | 0d |  | 312h | 14,680 | 14,680 |
| 10 | 1.2.1 | Identificar requisitos dos usuários |  | 20d? | 2023-08-24 | 2023-09-22 | 7FS+1d | 2023-08-24 | 2023-09-22 | 20d? | 0d | Analista de Requisitos | 160h | 8,000 | 8,000 |
| 11 | 1.2.2 | Identificar requisitos de desempenho |  | 6d? | 2023-08-24 | 2023-08-31 | 10SS | 2023-08-24 | 2023-08-31 | 6d? | 14d | Analista de Sistemas | 48h | 1,440 | 1,440 |
| 12 | 1.2.3 | Identificar requisitos de interface |  | 6d? | 2023-09-25 | 2023-10-02 | 10, 11 | 2023-09-25 | 2023-10-02 | 6d? | 0d | Analista de Requisitos; Analista de Sistemas | 88h | 3,600 | 3,600 |
| 13 | 1.2.4 | Preparar especificações de requisitos de software |  | 4d? | 2023-09-28 | 2023-10-03 | 12FS-3d | 2023-09-28 | 2023-10-03 | 4d? | 0d | Gerente de Projeto [50%]; Café [4 Litro] | 16h | 1,640 | 1,640 |
| 14 | 1.2.5 | Requisitos identificados | milestone | 0d | 2023-10-03 | 2023-10-03 | 12, 13 | 2023-10-03 | 2023-10-03 | 0d | 0d |  |  |  |  |
| 15 | 2 | Entrega do plano | milestone | 0d | 2023-10-03 | 2023-10-03 | 8, 14 | 2023-10-03 | 2023-10-03 | 0d | 0d |  |  |  |  |
