# Projeto Lab GPS

Schedule from MS Project, 2023-12-01 to 2024-02-15, status date 2023-12-18, costs in R$, A marks actual dates.

## Calendars

- Calendário UTP: Mon-Fri 09:00-12:00, 13:00-18:00; Sat-Sun off. Exceptions (off unless hours are given): 2023-09-07 to 2032-09-07 (Independência, recurring), 2023-09-08 to 2032-09-08 (Dia de Curitiba, recurring), 2023-10-12 to 2032-10-12 (Padroeira do Brasil, recurring), 2023-11-02 to 2032-11-02 (Finados, recurring), 2023-11-15 to 2032-11-15 (Proclamação da República, recurring), 2023-12-24 to 2032-12-24 09:00-13:00 (Véspera de Natal, recurring), 2023-12-25 to 2032-12-25 (Natal, recurring), 2023-12-31 to 2032-12-31 09:00-13:00 (Véspera de Ano Novo, recurring), 2024-01-01 to 2033-01-01 (Ano Novo, recurring), 2024-02-12 to 2024-02-13 (Carnaval), 2024-02-14 14:00-18:00 (Quarta de Cinzas).

## Resources

| Resource | Unit | Rate | Cost per use |
| --- | --- | --- | --- |
| Gerente de Projeto |  | 50 |  |
| Analista de Sistemas |  | 30 |  |
| Documentador |  | 20 |  |
| Testador |  | 10 |  |
| Programador |  | 10 |  |
| DBA |  | 50 | 200 |
| Papel | pct | 20 |  |

## Schedule

| ID | WBS | Task | Type | Duration | Start | Finish | Predecessors | Complete | Remaining | Baseline start | Baseline finish | Baseline duration | Total slack | Free slack | Resources | Work | Actual work | Cost | Baseline cost | Actual cost |
| --- | --- | --- | --- | --- | --- | --- | --- | --- | --- | --- | --- | --- | --- | --- | --- | --- | --- | --- | --- | --- |
| 1 | 1 | **Projeto LAB GPS** |  | 51d? | 2023-12-01 A | 2024-02-15 |  | 9% | 46.29d? | 2023-12-01 | 2024-02-08 | 49d? | 0d |  |  | 1822h | 162h | 30,400 | 29,040 | 5,840 |
| 2 | 1.1 | **Concepção** |  | 6.5d? | 2023-12-01 A | 2023-12-11 |  | 99% | 0d? | 2023-12-01 | 2023-12-07 | 4.5d? | 44.5d |  |  | 96h | 96h | 3,840 | 2,480 | 3,840 |
| 3 | 1.1.1 | Escopo |  | 3d? | 2023-12-01 A | 2023-12-05 A |  | 100% |  | 2023-12-01 | 2023-12-04 | 2d? |  |  | Gerente de Projeto; Analista de Sistemas | 48h | 48h | 2,000 | 1,280 | 2,000 |
| 4 | 1.1.2 | Estudo de Viabilidade |  | 2.5d? | 2023-12-06 A | 2023-12-08 A | 3 | 100% |  | 2023-12-05 | 2023-12-06 | 1.5d? |  |  | Gerente de Projeto; Analista de Sistemas | 32h | 32h | 1,200 | 760 | 1,200 |
| 5 | 1.1.3 | Planejamento |  | 1d? | 2023-12-08 A | 2023-12-11 A | 4 | 100% |  | 2023-12-06 | 2023-12-07 | 1d? |  |  | Gerente de Projeto; Analista de Sistemas | 16h | 16h | 640 | 440 | 640 |
| 6 | 1.1.4 | Entrega do plano do Projeto | milestone | 0d | 2023-12-11 | 2023-12-11 | 3, 4, 5 |  |  | 2023-12-07 | 2023-12-07 | 0d | 44.5d |  |  |  |  |  |  |  |
| 7 | 1.2 | **Elaboração** |  | 12.5d? | 2023-12-11 A | 2023-12-28 |  | 30% | 8.76d? | 2023-12-07 | 2023-12-26 | 12.5d? | 32d |  |  | 228h | 66h | 6,120 | 6,120 | 2,000 |
| 8 | 1.2.1 | Mapeamento de Processos |  | 3d? | 2023-12-11 A | 2023-12-14 A | 5 | 100% |  | 2023-12-07 | 2023-12-12 | 3d? |  |  | Gerente de Projeto; Analista de Sistemas; Documentador | 36h | 36h | 1,080 | 1,080 | 1,080 |
| 9 | 1.2.2 | Requisitos |  | 5d? | 2023-12-14 A | 2023-12-21 | 8 | 35% | 3.25d? | 2023-12-12 | 2023-12-19 | 5d? | 0d |  | Gerente de Projeto; Analista de Sistemas; Documentador | 56h | 30h | 1,640 | 1,640 | 920 |
| 10 | 1.2.3 | Modelos |  | 2.5d? | 2023-12-21 | 2023-12-26 | 9 |  |  | 2023-12-19 | 2023-12-21 | 2.5d? | 0d |  | Gerente de Projeto [30%]; Analista de Sistemas [40%]; DBA | 20h |  | 1,040 | 1,040 |  |
| 11 | 1.2.4 | Especificação funcional |  | 3.38d? | 2023-12-21 | 2023-12-26 | 9 |  |  | 2023-12-19 | 2023-12-21 | 3.38d? | 0d |  | Gerente de Projeto [60%]; Analista de Sistemas [60%]; Documentador; Programador [400%] | 84h |  | 1,720 | 1,720 |  |
| 12 | 1.2.5 | Especificar interfaces |  | 2d? | 2023-12-26 | 2023-12-28 | 10, 11 |  |  | 2023-12-21 | 2023-12-26 | 2.5d? | 0d |  | Analista de Sistemas; Programador [400%] | 32h |  | 640 | 640 |  |
| 13 | 1.2.6 | Entrega das Especificações | milestone | 0d | 2023-12-28 | 2023-12-28 | 8, 9, 10, 11, 12 |  |  | 2023-12-26 | 2023-12-26 | 0d | 32d |  |  |  |  |  |  |  |
| 14 | 1.3 | **Construção** |  | 27d? | 2023-12-28 | 2024-02-05 |  |  |  | 2023-12-26 | 2024-02-01 | 27d? | 0d |  |  | 1332h |  | 17,580 | 17,580 |  |
| 15 | 1.3.1 | Desenvolvimento |  | 36d? | 2023-12-28 | 2024-01-25 | 12 |  |  | 2023-12-26 | 2024-01-23 | 36d? | 6d | 5d | Gerente de Projeto [10%]; Analista de Sistemas [25%]; Programador [400%] | 696h |  | 8,400 | 8,400 |  |
| 16 | 1.3.2 | Planejamento dos testes |  | 2d? | 2023-12-28 | 2023-12-31 | 12 |  |  | 2023-12-26 | 2023-12-28 | 2d? | 0d |  | Gerente de Projeto [50%]; Analista de Sistemas [75%]; Testador [200%] | 28h |  | 680 | 680 |  |
| 17 | 1.3.3 | Planejamento da implantação |  | 2.5d? | 2023-12-28 | 2024-01-02 | 12 |  |  | 2023-12-26 | 2023-12-28 | 2.5d? | 24.5d |  | Gerente de Projeto [40%] | 8h |  | 400 | 400 |  |
| 18 | 1.3.4 | Testes |  | 25d? | 2024-01-02 | 2024-02-05 | 16 |  |  | 2023-12-28 | 2024-02-01 | 25d? | 0d |  | Testador [200%] | 400h |  | 4,000 | 4,000 |  |
| 19 | 1.3.5 | Documentação |  | 25d? | 2023-12-28 | 2024-02-01 | 12 |  |  | 2023-12-26 | 2024-01-30 | 25d? | 1d | 0d | Documentador; Papel [5 pct] | 200h |  | 4,100 | 4,100 |  |
| 20 | 1.3.6 | Entrega do Produto | milestone | 0d | 2024-02-05 | 2024-02-05 | 15, 16, 17, 18, 19 |  |  | 2024-02-01 | 2024-02-01 | 0d | 5d |  |  |  |  |  |  |  |
| 21 | 1.4 | **Transição** |  | 7d? | 2024-02-01 | 2024-02-15 |  |  |  | 2024-01-30 | 2024-02-08 | 7d? | 0d |  |  | 166h |  | 2,860 | 2,860 |  |
| 22 | 1.4.1 | Treinamento |  | 2d? | 2024-02-01 | 2024-02-02 | 15, 19 |  |  | 2024-01-30 | 2024-01-31 | 2d? | 1d |  | Gerente de Projeto; Analista de Sistemas; Programador [400%] | 42h |  | 660 | 660 |  |
| 23 | 1.4.2 | Implantação |  | 7d? | 2024-02-05 | 2024-02-15 | 22, 17, 18 |  |  | 2024-02-01 | 2024-02-08 | 7d? | 0d |  | Gerente de Projeto; Analista de Sistemas; Programador [400%] | 124h |  | 2,200 | 2,200 |  |
| 24 | 1.4.3 | Final do Projeto | milestone | 0d | 2024-02-15 | 2024-02-15 | 22, 23 |  |  | 2024-02-08 | 2024-02-08 | 0d | 0d |  |  |  |  |  |  |  |
